# 项目规划_于喜梅

Schedule from MS Project, 2020-09-13 to 2020-10-30.
Microsoft

## Calendars

- 标准: Mon-Fri 08:00-12:00, 13:00-17:00; Sat-Sun off.

## Schedule

| ID | WBS | Task | Type | Duration | Start | Finish | Predecessors | Work |
| --- | --- | --- | --- | --- | --- | --- | --- | --- |
| 1 | 1 | **启动** |  | 4d | 2020-09-13 | 2020-09-16 |  | 16h |
| 2 | 1.1 | 组建核心团队 | manual | 1d | 2020-09-13 | 2020-09-13 |  | 1h |
| 3 | 1.2 | 干系人分析 | manual | 1d | 2020-09-13 | 2020-09-14 |  | 8h |
| 4 | 1.3 | 里程碑计划 | manual | 1d | 2020-09-14 | 2020-09-14 |  | 2h |
| 5 | 1.4 | 制定项目章程 | manual | 1.12d | 2020-09-15 | 2020-09-15 | 2, 3, 4 | 3h |
| 6 | 1.5 | 项目启动大会 | milestone, manual | 1d | 2020-09-16 | 2020-09-16 | 5 | 2h |
| 7 | 2 | **规划** |  | 18d | 2020-09-16 | 2020-10-09 |  |  |
| 8 | 2.1 | **规划范围** |  | 5d | 2020-09-17 | 2020-09-23 |  |  |
| 9 | 2.1.1 | 制定需求说明书 | manual | 1d | 2020-09-17 | 2020-09-17 | 6 |  |
| 10 | 2.1.2 | 界面设计 | manual | 2d | 2020-09-18 | 2020-09-20 | 9 |  |
| 11 | 2.1.3 | 详细设计说明书 | manual | 1d | 2020-09-21 | 2020-09-21 | 10 |  |
| 12 | 2.1.4 | 项目范围说明书 | manual | 1d | 2020-09-21 | 2020-09-21 | 10 |  |
| 13 | 2.1.5 | 创建WBS | manual | 1d | 2020-09-22 | 2020-09-22 | 10, 11, 12 |  |
| 14 | 2.1.6 | 形成范围基准 | manual | 1d | 2020-09-23 | 2020-09-23 | 13 |  |
| 15 | 2.2 | **规划时间** |  | 4d | 2020-09-23 | 2020-09-28 |  |  |
| 16 | 2.2.1 | 估算资源 | manual | 1d | 2020-09-23 | 2020-09-24 | 13 |  |
| 17 | 2.2.2 | 估算持续时间 | manual | 1d | 2020-09-24 | 2020-09-25 | 13 |  |
| 18 | 2.2.3 | 制定进度计划 | manual | 1d | 2020-09-25 | 2020-09-26 | 17 |  |
| 19 | 2.2.4 | 形成进度基准 | manual | 1d | 2020-09-28 | 2020-09-28 | 18 |  |
| 20 | 2.3 | **规划成本** |  | 4d | 2020-09-24 | 2020-09-29 |  |  |
| 21 | 2.3.1 | 项目成本估算 | manual | 1d | 2020-09-24 | 2020-09-25 | 14 |  |
| 22 | 2.3.2 | 项目预算 | manual | 2d | 2020-09-25 | 2020-09-26 | 21 |  |
| 23 | 2.3.3 | 行成范围基准 | manual | 2d | 2020-09-28 | 2020-09-29 | 22 |  |
| 24 | 2.4 | **规划质量** |  | 3d | 2020-09-30 | 2020-10-02 |  |  |
| 25 | 2.4.1 | 制定测试计划 | manual | 2d | 2020-09-30 | 2020-10-01 | 23 |  |
| 26 | 2.4.2 | 指定测试用例 | manual | 1d | 2020-10-02 | 2020-10-02 | 25 |  |

| ID | WBS | Task | Type | Duration | Start | Finish | Predecessors | Total slack |
| --- | --- | --- | --- | --- | --- | --- | --- | --- |
| 27 | 2.5 | **规划人力资源** |  | 4d | 2020-09-29 | 2020-10-02 |  |  |
| 28 | 2.5.1 | 制定人力资源计划 | manual | 2d | 2020-09-29 | 2020-09-30 | 19 |  |
| 29 | 2.5.2 | 制定人力配备管理计划 | manual | 1d | 2020-10-01 | 2020-10-01 | 28 |  |
| 30 | 2.6 | **规划沟通** |  | 1d | 2020-10-02 | 2020-10-03 |  |  |
| 31 | 2.6.1 | 制定沟通管理计划 | manual | 1d | 2020-10-02 | 2020-10-03 | 29 |  |
| 32 | 2.7 | **规划采购** |  | 3d | 2020-10-02 | 2020-10-06 |  |  |
| 33 | 2.7.1 | 自制外购计划 | manual | 2d | 2020-10-02 | 2020-10-03 | 23, 29 |  |
| 34 | 2.7.2 | 制定采购文件 |  | 1d | 2020-10-05 | 2020-10-05 | 33 | 1d |
| 35 | 2.8 | **规划风险** |  | 3d | 2020-10-05 | 2020-10-07 |  | 0d |
| 36 | 2.8.1 | 识别风险 | manual | 1d | 2020-10-05 | 2020-10-05 | 26, 13, 24 |  |
| 37 | 2.8.2 | 风险分析 |  | 1d | 2020-10-06 | 2020-10-06 | 36 | 0d |
| 38 | 2.8.3 | 制定风险登记册 |  | 1d | 2020-10-07 | 2020-10-07 | 37 | 0d |
| 39 | 2.9 | 规划整合 | milestone | 1d | 2020-10-08 | 2020-10-08 | 38 | 0d |
| 40 | 3 | **执行与监控** |  | 16d | 2020-10-10 | 2020-10-30 |  |  |
| 41 | 3.1 | 组建项目团队 | manual | 1d | 2020-10-09 | 2020-10-09 | 39 |  |
| 42 | 3.2 | **项目执行** |  | 11d | 2020-10-11 | 2020-10-26 |  | 0d |
| 43 | 3.2.1 | **首页模块** |  | 7d | 2020-10-11 | 2020-10-19 |  |  |
| 44 | 3.2.1.1 | 笔记展示 | manual | 4d | 2020-10-11 | 2020-10-14 |  |  |
| 45 | 3.2.1.2 | 搜索笔记 | manual | 3.12d | 2020-10-15 | 2020-10-18 | 44 |  |
| 46 | 3.2.2 | **用户模块** |  | 11d | 2020-10-11 | 2020-10-26 |  | 0d |
| 47 | 3.2.2.1 | 注册登录 | manual | 2d | 2020-10-11 | 2020-10-12 | 41 |  |
| 48 | 3.2.2.2 | 个人中心 | manual | 5d | 2020-10-13 | 2020-10-19 | 47 |  |
| 49 | 3.2.2.3 | 关注 | manual | 2d | 2020-10-20 | 2020-10-21 | 48 |  |
| 50 | 3.2.2.4 | 发布笔记 |  | 5d | 2020-10-20 | 2020-10-26 | 48 | 0d |
| 51 | 3.2.2.5 | 发送消息 | manual | 3d | 2020-10-20 | 2020-10-23 | 48 |  |
| 52 | 3.2.2.6 | 个人设置 | manual | 4d | 2020-10-14 | 2020-10-17 | 47 |  |

| ID | WBS | Task | Type | Duration | Start | Finish | Predecessors | Total slack |
| --- | --- | --- | --- | --- | --- | --- | --- | --- |
| 53 | 3.2.3 | **笔记模块** |  | 9d | 2020-10-11 | 2020-10-21 |  |  |
| 54 | 3.2.3.1 | 展示笔记详情 | manual | 5d | 2020-10-12 | 2020-10-16 | 41 |  |
| 55 | 3.2.3.2 | 点赞，收藏笔记 | manual | 2d | 2020-10-19 | 2020-10-20 | 54 |  |
| 56 | 3.2.3.3 | 收藏夹 | manual | 1d | 2020-10-21 | 2020-10-21 | 55 |  |
| 57 | 3.2.3.4 | 评论 |  | 3d | 2020-10-19 | 2020-10-21 | 54 | 0d |
| 58 | 3.2.3.5 | 关注 | manual | 1d | 2020-10-19 | 2020-10-19 | 54 |  |
| 59 | 3.2.4 | **发现模块** |  | 10d | 2020-10-11 | 2020-10-22 |  |  |
| 60 | 3.2.4.1 | 同城笔记展示 |  | 4d | 2020-10-15 | 2020-10-20 | 44 | 2d |
| 61 | 3.2.4.2 | 关注用户笔记展示 | manual | 2d | 2020-10-21 | 2020-10-22 | 48, 58 |  |
| 62 | 3.2.5 | **线上旅游模块** |  | 8d | 2020-10-12 | 2020-10-21 |  | 0d |
| 63 | 3.2.5.1 | 旅游线路简介 | manual | 5d | 2020-10-12 | 2020-10-16 | 41 |  |
| 64 | 3.2.5.2 | 线上旅游打卡 |  | 3d | 2020-10-19 | 2020-10-21 | 63 | 3d |
| 65 | 3.3 | **项目监控** |  | 14d | 2020-10-11 | 2020-10-28 |  |  |
| 66 | 3.3.1 | 各项指标监控 | manual | 4d | 2020-10-21 | 2020-10-26 | 41 |  |
| 67 | 3.3.2 | 监控评审 | manual | 1.12d | 2020-10-27 | 2020-10-27 | 66 |  |
| 68 | 3.3.3 | 变更评审 | manual | 1d | 2020-10-28 | 2020-10-28 | 67 |  |
| 69 | 3.3.4 | 例会 | manual | 11.12d | 2020-10-12 | 2020-10-27 | 41 |  |
| 70 | 3.4 | **管理干系人** |  | 15d | 2020-10-11 | 2020-10-29 |  |  |
| 71 | 3.4.1 | 发布项目信息 | manual | 2d | 2020-10-27 | 2020-10-28 | 42 |  |
| 72 | 3.4.2 | 报告监控指标 | manual | 1d | 2020-10-29 | 2020-10-29 | 71 |  |
| 73 | 3.4.3 | 干系人沟通 | manual | 11.12d | 2020-10-12 | 2020-10-26 | 41 |  |
| 74 | 3.5 | **团队建设** |  | 14d | 2020-10-11 | 2020-10-28 |  |  |
| 75 | 3.5.1 | 娱乐活动 | manual | 1d | 2020-10-16 | 2020-10-16 |  |  |
| 76 | 3.5.2 | 项目各功能展示 | manual | 2d | 2020-10-27 | 2020-10-28 | 42 |  |

| ID | WBS | Task | Duration | Start | Finish | Predecessors | Total slack | Constraint |
| --- | --- | --- | --- | --- | --- | --- | --- | --- |
| 77 | 3.6 | **收尾** | 2d | 2020-10-29 | 2020-10-30 |  |  |  |
| 78 | 3.6.1 | 项目终验 | 0.88d | 2020-10-30 | 2020-10-30 | 42, 65, 70, 74 | 0d | finish no earlier than 2020-10-30 |
